# Software Development

Schedule from MS Project, 2017-04-24 to 2017-05-19, A marks actual dates.

## Calendars

- Standard: Mon-Fri 08:00-12:00, 13:00-17:00; Sat-Sun off. Exceptions (off unless hours are given): 2017-05-01 (Quoc te lao dong), 2017-05-02 (Nghi bu ngay mien nam hoan toan giai phong).

## Resources

| Resource |
| --- |
| Management |
| Project Manager |
| Analyst |
| Developer |
| Testers |
| Trainers |
| Technical Communicators |
| Deployment Team |
| Nhóm 3 |
| DuyetDT |
| SangNT9 |
| DuyHK |
| SonPHH |

## Schedule

| ID | WBS | Task | Duration | Start | Finish | Predecessors | Complete | Total slack | Free slack | Constraint | Resources | Work | Actual work | Output |
| --- | --- | --- | --- | --- | --- | --- | --- | --- | --- | --- | --- | --- | --- | --- |
| 1 | 1 | **Analysis/Software Requirements** | 5d | 2017-04-24 08:00 A | 2017-04-28 17:00 A |  | 100% |  |  |  |  | 148h | 148h |  |
| 2 | 1.1 | Clarify Requrement | 2h | 2017-04-24 08:00 A | 2017-04-24 10:00 A |  | 100% |  |  | start no earlier than 2017-04-24 08:00 | DuyetDT; DuyHK; SangNT9; SonPHH | 8h | 8h |  |
| 3 | 1.2 | **Create Q&A** | 0.25d | 2017-04-24 10:00 A | 2017-04-24 12:00 A | 2 | 100% |  |  |  |  | 8h | 8h |  |
| 4 | 1.2.1 | Create Q&A for Interview process management function (in section 2.3) | 1h | 2017-04-24 10:00 A | 2017-04-24 11:00 A | 2 | 100% |  |  |  | DuyetDT; DuyHK; SangNT9; SonPHH | 4h | 4h | Q&A document |
| 5 | 1.2.2 | Create Q&A for Round management function(at section 2.3) | 0.5h | 2017-04-24 11:00 A | 2017-04-24 11:30 A | 4 | 100% |  |  |  | DuyetDT; DuyHK; SangNT9; SonPHH | 2h | 2h | Q&A document |
| 6 | 1.2.3 | Create Q&A for adding multiple candidates to one process fucntion | 0.5h | 2017-04-24 11:30 A | 2017-04-24 12:00 A | 5 | 100% |  |  |  | DuyetDT; DuyHK; SangNT9; SonPHH | 2h | 2h | Q&A document |
| 7 | 1.3 | **Create SRS** | 2.5d | 2017-04-24 13:00 A | 2017-04-26 17:00 A | 3 | 100% |  |  |  |  | 68h | 68h |  |
| 8 | 1.3.1 | Create Class diagram, Activity diagram (Cover page) | 6h | 2017-04-24 13:00 A | 2017-04-26 15:00 A | 3 | 100% |  |  |  | DuyetDT; DuyHK; SangNT9; SonPHH | 18h | 18h | Class diagram and Activity diagram |
| 9 | 1.3.2 | Manage Candidate - position | 1.5d | 2017-04-24 13:00 A | 2017-04-25 17:00 A | 8 | 100% |  |  |  | DuyetDT | 12h | 12h | UseCase and Sequence diagram |
| 10 | 1.3.3 | **Interview process management fuction** | 1.5d | 2017-04-25 10:00 A | 2017-04-26 15:00 A | 8 | 100% |  |  |  |  | 18h | 18h | UseCase and Sequence diagram |
| 11 | 1.3.3.1 | Add | 6h | 2017-04-25 10:00 A | 2017-04-25 17:00 A | 8 | 100% |  |  |  | SangNT9 | 6h | 6h |  |
| 12 | 1.3.3.2 | Edit | 6h | 2017-04-26 08:00 A | 2017-04-26 15:00 A | 11 | 100% |  |  |  | SangNT9 | 6h | 6h |  |
| 13 | 1.3.3.3 | Delete | 3h | 2017-04-25 10:00 A | 2017-04-25 14:00 A | 8 | 100% |  |  |  | DuyHK | 3h | 3h |  |
| 14 | 1.3.3.4 | Show list (Search) | 3h | 2017-04-25 14:00 A | 2017-04-25 17:00 A | 13 | 100% |  |  |  | DuyHK | 3h | 3h |  |
| 15 | 1.3.4 | **Round management fuction** | 1.75d | 2017-04-25 10:00 A | 2017-04-26 17:00 A | 8 | 100% |  |  |  |  | 20h | 20h | UseCase and Sequence diagram |
| 16 | 1.3.4.1 | Add | 6h | 2017-04-25 10:00 A | 2017-04-25 17:00 A | 8 | 100% |  |  |  | SonPHH | 6h | 6h |  |
| 17 | 1.3.4.2 | Edit | 6h | 2017-04-26 08:00 A | 2017-04-26 15:00 A | 16 | 100% |  |  |  | SonPHH | 6h | 6h |  |
| 18 | 1.3.4.3 | Delete | 4h | 2017-04-26 08:00 A | 2017-04-26 12:00 A | 14 | 100% |  |  |  | DuyHK | 4h | 4h |  |
| 19 | 1.3.4.4 | Show list (search) | 4h | 2017-04-26 13:00 A | 2017-04-26 17:00 A | 18 | 100% |  |  |  | DuyHK | 4h | 4h |  |
| 20 | 1.4 | Review & Approve | 1d | 2017-04-27 08:00 A | 2017-04-27 17:00 A | 15 | 100% |  |  |  | DuyetDT; DuyHK; SangNT9; SonPHH | 32h | 32h |  |
| 21 | 1.5 | Rework & Update SRS | 1d | 2017-04-28 08:00 A | 2017-04-28 17:00 A | 15 | 100% |  |  | start no earlier than 2017-04-28 05:00 | DuyetDT; DuyHK; SangNT9; SonPHH | 32h | 32h |  |
| 22 | 2 | **Design** | 4.66d | 2017-05-03 08:00 | 2017-05-09 14:15 | 1 |  | 3.09d | 0d |  | Analyst | 81h |  | Detail design document |
| 23 | 2.1 | **High level design** | 1d | 2017-05-03 08:00 | 2017-05-03 17:00 | 1 |  | 3.09d | 0d |  |  | 8h |  |  |
| 24 | 2.1.1 | Software architecture | 0.5d | 2017-05-03 08:00 | 2017-05-03 12:00 | 1 |  | 3.09d | 0d |  | SonPHH | 4h |  |  |
| 25 | 2.1.2 | System architecture | 0.5d | 2017-05-03 13:00 | 2017-05-03 17:00 | 24 |  | 3.09d |  |  | SonPHH | 4h |  |  |
| 26 | 2.2 | Review & Approve High level design | 1h | 2017-05-04 08:00 | 2017-05-04 09:00 | 23 |  | 3.09d | 0d | start no earlier than 2017-05-03 08:00 | DuyetDT; DuyHK; SangNT9; SonPHH | 4h |  |  |
| 27 | 2.3 | Rework & Update High level design | 1h | 2017-05-04 09:00 | 2017-05-04 10:00 | 26 |  | 3.09d | 0d |  | DuyHK; SangNT9; SonPHH; DuyetDT | 4h |  |  |

| ID | WBS | Task | Duration | Start | Finish | Predecessors | Total slack | Free slack | Resources | Work |
| --- | --- | --- | --- | --- | --- | --- | --- | --- | --- | --- |
| 28 | 2.4 | **Detail Design** | 3.03d | 2017-05-04 10:00 | 2017-05-09 10:15 | 1 | 3.09d |  |  | 53h |
| 29 | 2.4.1 | **Screen Design Document** | 2.12d | 2017-05-04 10:00 | 2017-05-08 11:00 | 27 | 3.09d | 0d |  | 30h |
| 30 | 2.4.1.1 | Screen follow | 1h | 2017-05-04 10:00 | 2017-05-04 11:00 | 27 | 3.09d | 0d |  |  |
| 31 | 2.4.1.2 | Screen’s component list | 1h | 2017-05-04 11:00 | 2017-05-04 12:00 | 30 | 3.09d | 0d |  |  |
| 32 | 2.4.1.3 | Screen picture | 1h | 2017-05-04 13:00 | 2017-05-04 14:00 | 31 | 3.09d | 0d |  |  |
| 33 | 2.4.1.4 | **Activity Diagram** | 0.25d | 2017-05-04 14:00 | 2017-05-04 16:00 | 32 | 3.09d | 0d |  | 10h |
| 34 | 2.4.1.4.1 | Manage Candidate - position | 2h | 2017-05-04 14:00 | 2017-05-04 16:00 |  | 3.09d |  | DuyetDT | 2h |
| 35 | 2.4.1.4.2 | **Interview process management fuction** | 0.25d | 2017-05-04 14:00 | 2017-05-04 16:00 |  | 3.09d |  | SangNT9 | 4h |
| 36 | 2.4.1.4.2.1 | Add | 0.5h | 2017-05-04 14:00 | 2017-05-04 14:30 |  | 3.09d | 0d | SangNT9 | 0.5h |
| 37 | 2.4.1.4.2.2 | Edit | 0.5h | 2017-05-04 14:30 | 2017-05-04 15:00 | 36 | 3.09d | 0d | SangNT9 | 0.5h |
| 38 | 2.4.1.4.2.3 | Delete | 0.5h | 2017-05-04 15:00 | 2017-05-04 15:30 | 37 | 3.09d | 0d | SangNT9 | 0.5h |
| 39 | 2.4.1.4.2.4 | Show list (Search) | 0.5h | 2017-05-04 15:30 | 2017-05-04 16:00 | 38 | 3.09d |  | SangNT9 | 0.5h |
| 40 | 2.4.1.4.3 | **Round management fuction** | 0.25d | 2017-05-04 14:00 | 2017-05-04 16:00 |  | 3.09d |  | DuyHK | 4h |
| 41 | 2.4.1.4.3.1 | Add | 0.5h | 2017-05-04 14:00 | 2017-05-04 14:30 |  | 3.09d | 0d | DuyHK | 0.5h |
| 42 | 2.4.1.4.3.2 | Edit | 0.5h | 2017-05-04 14:30 | 2017-05-04 15:00 | 41 | 3.09d | 0d | DuyHK | 0.5h |
| 43 | 2.4.1.4.3.3 | Delete | 0.5h | 2017-05-04 15:00 | 2017-05-04 15:30 | 42 | 3.09d | 0d | DuyHK | 0.5h |
| 44 | 2.4.1.4.3.4 | Show list (search) | 0.5h | 2017-05-04 15:30 | 2017-05-04 16:00 | 43 | 3.09d |  | DuyHK | 0.5h |
| 45 | 2.4.1.5 | **Sequence diagram** | 1.5d | 2017-05-04 16:00 | 2017-05-08 11:00 | 33 | 3.09d |  |  | 20h |
| 46 | 2.4.1.5.1 | Manage Candidate - position | 1.5d | 2017-05-04 16:00 | 2017-05-08 11:00 | 33 | 3.09d |  | DuyetDT | 12h |
| 47 | 2.4.1.5.2 | **Interview process management fuction** | 0.25d | 2017-05-04 16:00 | 2017-05-05 09:00 |  | 4.34d |  | SangNT9 | 4h |
| 48 | 2.4.1.5.2.1 | Add | 0.5h | 2017-05-04 16:00 | 2017-05-04 16:30 | 33 | 4.34d | 0d | SangNT9 | 0.5h |
| 49 | 2.4.1.5.2.2 | Edit | 0.5h | 2017-05-04 16:30 | 2017-05-04 17:00 | 48 | 4.34d | 0d | SangNT9 | 0.5h |
| 50 | 2.4.1.5.2.3 | Delete | 0.5h | 2017-05-05 08:00 | 2017-05-05 08:30 | 49 | 4.34d | 0d | SangNT9 | 0.5h |
| 51 | 2.4.1.5.2.4 | Show list (Search) | 0.5h | 2017-05-05 08:30 | 2017-05-05 09:00 | 50 | 4.34d |  | SangNT9 | 0.5h |

| ID | WBS | Task | Duration | Start | Finish | Predecessors | Total slack | Free slack | Constraint | Resources | Work |
| --- | --- | --- | --- | --- | --- | --- | --- | --- | --- | --- | --- |
| 52 | 2.4.1.5.3 | **Round management fuction** | 0.25d | 2017-05-04 16:00 | 2017-05-05 09:00 |  | 4.34d |  |  | DuyHK | 4h |
| 53 | 2.4.1.5.3.1 | Add | 0.5h | 2017-05-04 16:00 | 2017-05-04 16:30 | 33 | 4.34d | 0d |  | DuyHK | 0.5h |
| 54 | 2.4.1.5.3.2 | Edit | 0.5h | 2017-05-04 16:30 | 2017-05-04 17:00 | 53 | 4.34d | 0d |  | DuyHK | 0.5h |
| 55 | 2.4.1.5.3.3 | Delete | 0.5h | 2017-05-05 08:00 | 2017-05-05 08:30 | 54 | 4.34d | 0d |  | DuyHK | 0.5h |
| 56 | 2.4.1.5.3.4 | Show list (search) | 0.5h | 2017-05-05 08:30 | 2017-05-05 09:00 | 55 | 4.34d |  |  | DuyHK | 0.5h |
| 57 | 2.4.2 | **Class Design Document** | 0.66d | 2017-05-08 11:00 | 2017-05-09 08:15 | 29 | 3.09d | 0d |  |  | 15h |
| 58 | 2.4.2.1 | Technical constraints | 0.25h | 2017-05-08 11:00 | 2017-05-08 11:15 | 29 | 3.09d | 0d |  | DuyetDT; DuyHK; SangNT9; SonPHH | 1h |
| 59 | 2.4.2.2 | **Logical view** | 0.25d | 2017-05-08 11:15 | 2017-05-08 14:15 | 58 | 3.09d | 0d |  | DuyetDT | 2h |
| 60 | 2.4.2.2.1 | **Presentation Layer** | 0.25d | 2017-05-08 11:15 | 2017-05-08 14:15 |  | 3.09d |  |  |  |  |
| 61 | 2.4.2.2.1.1 | ModelAndView Diagram | 2h | 2017-05-08 11:15 | 2017-05-08 14:15 |  | 3.09d |  |  |  |  |
| 62 | 2.4.2.2.1.2 | Controller | 1h | 2017-05-08 11:15 | 2017-05-08 13:15 |  | 3.22d |  |  |  |  |
| 63 | 2.4.2.2.2 | Business Layer | 1.5h | 2017-05-08 11:15 | 2017-05-08 13:45 |  | 3.16d |  | start no earlier than 2017-05-04 08:00 |  |  |
| 64 | 2.4.2.2.3 | **Data Access Layer** | 0.12d | 2017-05-08 11:15 | 2017-05-08 13:15 |  | 3.22d |  |  |  |  |
| 65 | 2.4.2.2.3.1 | Entity | 1h | 2017-05-08 11:15 | 2017-05-08 13:15 |  | 3.22d |  | start no earlier than 2017-05-04 08:00 |  |  |
| 66 | 2.4.2.2.3.2 | Repository (DAL) | 1h | 2017-05-08 11:15 | 2017-05-08 13:15 |  | 3.22d |  | start no earlier than 2017-05-04 08:00 |  |  |
| 67 | 2.4.2.2.4 | Common classes | 0.5h | 2017-05-08 11:15 | 2017-05-08 11:45 |  | 3.28d |  | start no earlier than 2017-05-04 08:00 |  |  |
| 68 | 2.4.2.3 | **Architecturally significant design packages** | 0.12d | 2017-05-08 14:15 | 2017-05-08 15:15 | 59 | 3.09d | 0d |  | DuyetDT; DuyHK; SangNT9; SonPHH | 4h |
| 69 | 2.4.2.3.1 | Package structure | 1h | 2017-05-08 14:15 | 2017-05-08 15:15 |  | 3.09d |  |  |  |  |
| 70 | 2.4.2.3.2 | Error and exception handling | 1h | 2017-05-08 14:15 | 2017-05-08 15:15 |  | 3.09d |  |  |  |  |
| 71 | 2.4.2.3.3 | Log, trace, and debug | 1h | 2017-05-08 14:15 | 2017-05-08 15:15 |  | 3.09d |  |  |  |  |
| 72 | 2.4.2.3.4 | Common flow | 1h | 2017-05-08 14:15 | 2017-05-08 15:15 |  | 3.09d |  |  |  |  |
| 73 | 2.4.2.4 | Software and deployment architecture | 2h | 2017-05-08 15:15 | 2017-05-09 08:15 | 68 | 3.09d |  | start no earlier than 2017-05-05 08:00 | DuyetDT; DuyHK; SangNT9; SonPHH | 8h |
| 74 | 2.4.3 | **Data Design Document** | 0.25d | 2017-05-09 08:15 | 2017-05-09 10:15 | 57 | 3.09d | 0d |  | DuyetDT; DuyHK; SangNT9; SonPHH | 8h |
| 75 | 2.4.3.1 | Entity relationship diagrams | 2h | 2017-05-09 08:15 | 2017-05-09 10:15 |  | 3.09d |  |  |  |  |
| 76 | 2.4.3.2 | Tables structure | 2h | 2017-05-09 08:15 | 2017-05-09 10:15 |  | 3.09d |  | start no earlier than 2017-05-08 08:00 |  |  |
| 77 | 2.4.3.3 | Fields structure | 2h | 2017-05-09 08:15 | 2017-05-09 10:15 |  | 3.09d |  | start no earlier than 2017-05-08 08:00 |  |  |
| 78 | 2.4.3.4 | Files structure | 1h | 2017-05-09 08:15 | 2017-05-09 09:15 |  | 3.22d |  | start no earlier than 2017-05-08 08:00 |  |  |
| 79 | 2.4.3.5 | Design the format of codes | 1h | 2017-05-09 08:15 | 2017-05-09 09:15 |  | 3.22d |  | start no earlier than 2017-05-08 08:00 |  |  |
| 80 | 2.5 | Review & Approve detail design | 1h | 2017-05-09 10:15 | 2017-05-09 11:15 | 74 | 3.09d | 0d | start no earlier than 2017-05-09 08:00 | DuyetDT; DuyHK; SangNT9; SonPHH | 4h |
| 81 | 2.6 | Rework & Review & Approve Detail design | 1h | 2017-05-09 11:15 | 2017-05-09 13:15 | 80 | 3.09d | 0d | start no earlier than 2017-05-08 08:00 | DuyetDT; DuyHK; SangNT9; SonPHH | 4h |
| 82 | 2.7 | Conduct design transition | 1h | 2017-05-09 13:15 | 2017-05-09 14:15 | 81 | 3.09d |  |  | DuyetDT; DuyHK; SangNT9; SonPHH | 4h |

Notes:
- 81: Output: Class, Sequence, Detail Design (Screen Document), Schema Design (Entity Relationship Database)

| ID | WBS | Task | Type | Duration | Start | Finish | Predecessors | Total slack | Free slack | Constraint | Resources | Work | Output |
| --- | --- | --- | --- | --- | --- | --- | --- | --- | --- | --- | --- | --- | --- |
| 83 | 3 | **Create test case** |  | 0.5d | 2017-05-09 14:15 | 2017-05-10 09:15 | 22 | 3.09d | 0d |  |  | 16h | Unit test case document |
| 84 | 3.1 | **Interview process management fuction** |  | 0.5d | 2017-05-09 14:15 | 2017-05-10 09:15 | 22 | 3.09d |  |  | DuyetDT; SangNT9 | 8h |  |
| 85 | 3.1.1 | Add |  | 1h | 2017-05-09 14:15 | 2017-05-09 15:15 | 22 | 3.09d | 0d |  |  |  |  |
| 86 | 3.1.2 | Edit |  | 1h | 2017-05-09 15:15 | 2017-05-09 16:15 | 85 | 3.09d | 0d |  |  |  |  |
| 87 | 3.1.3 | Delete |  | 1h | 2017-05-09 16:15 | 2017-05-10 08:15 | 86 | 3.09d | 0d |  |  |  |  |
| 88 | 3.1.4 | Show list (Search) |  | 1h | 2017-05-10 08:15 | 2017-05-10 09:15 | 87 | 3.09d |  |  |  |  |  |
| 89 | 3.2 | **Round management fuction** |  | 0.5d | 2017-05-09 14:15 | 2017-05-10 09:15 | 22 | 3.09d |  |  | SonPHH; DuyHK | 8h |  |
| 90 | 3.2.1 | Add |  | 1h | 2017-05-09 14:15 | 2017-05-09 15:15 |  | 3.09d | 0d |  |  |  |  |
| 91 | 3.2.2 | Edit |  | 1h | 2017-05-09 15:15 | 2017-05-09 16:15 | 90 | 3.09d | 0d |  |  |  |  |
| 92 | 3.2.3 | Delete |  | 1h | 2017-05-09 16:15 | 2017-05-10 08:15 | 91 | 3.09d | 0d |  |  |  |  |
| 93 | 3.2.4 | Show list (search) |  | 1h | 2017-05-10 08:15 | 2017-05-10 09:15 | 92 | 3.09d |  |  |  |  |  |
| 94 | 4 | **Coding** |  | 6.34d | 2017-05-10 09:15 | 2017-05-18 12:00 | 83 | 0d |  |  |  | 60h |  |
| 95 | 4.1 | Code library module |  | 4h | 2017-05-10 09:15 | 2017-05-10 14:15 | 83 | 3.09d | 0d |  |  |  |  |
| 96 | 4.2 | Review code libray module |  | 2h | 2017-05-10 14:15 | 2017-05-10 16:15 | 95 | 3.09d | 0d |  |  |  |  |
| 97 | 4.3 | **Code function module** |  | 4.09d | 2017-05-10 16:15 | 2017-05-16 17:00 | 96 | 1.5d |  |  |  | 60h | Function code |
| 98 | 4.3.1 | **Interview process management fuction** |  | 2.5d | 2017-05-10 16:15 | 2017-05-15 11:15 | 96 | 3.09d |  |  |  | 40h |  |
| 99 | 4.3.1.1 | Add |  | 1d | 2017-05-10 16:15 | 2017-05-11 16:15 | 96 | 3.09d | 0d |  | DuyetDT | 8h |  |
| 100 | 4.3.1.2 | Edit |  | 1.5d | 2017-05-11 16:15 | 2017-05-15 11:15 | 99 | 3.09d |  |  | DuyetDT | 12h |  |
| 101 | 4.3.1.3 | Delete |  | 0.5d | 2017-05-10 16:15 | 2017-05-11 11:15 | 96 | 3.09d | 0d |  | SonPHH | 4h |  |
| 102 | 4.3.1.4 | Show detail |  | 1d | 2017-05-11 11:15 | 2017-05-12 11:15 | 101 | 3.09d | 0d |  | SonPHH | 8h |  |
| 103 | 4.3.1.5 | Show list (Search) |  | 1d | 2017-05-12 11:15 | 2017-05-15 11:15 | 102 | 3.09d |  |  | SonPHH | 8h |  |
| 104 | 4.3.2 | **Round management fuction** |  | 2.5d | 2017-05-12 13:00 | 2017-05-16 17:00 | 111 | 1.5d |  |  |  | 20h |  |
| 105 | 4.3.2.1 | Add |  | 0.5d | 2017-05-12 13:00 | 2017-05-12 17:00 | 22 | 1.5d | 0d |  | DuyHK | 4h |  |
| 106 | 4.3.2.2 | Edit |  | 0.5d | 2017-05-15 08:00 | 2017-05-15 12:00 | 105 | 1.5d | 0d |  | DuyHK | 4h |  |
| 107 | 4.3.2.3 | Show list (search) |  | 0.5d | 2017-05-15 13:00 | 2017-05-15 17:00 | 106 | 1.5d | 0d |  | DuyHK | 4h |  |
| 108 | 4.3.2.4 | Show detail |  | 0.5d | 2017-05-16 08:00 | 2017-05-16 12:00 | 107 | 1.5d | 0d |  | DuyHK | 4h |  |
| 109 | 4.3.2.5 | Delete |  | 0.5d | 2017-05-16 13:00 | 2017-05-16 17:00 | 108 | 1.5d |  |  | DuyHK | 4h |  |
| 110 | 4.4 | Update test case for library module |  | 2h | 2017-05-10 09:15 | 2017-05-10 11:15 |  | 6.09d |  |  |  |  |  |
| 111 | 4.5 | Create test code |  | 4h | 2017-05-12 08:00 | 2017-05-12 12:00 |  | 1.5d | 0d | start no earlier than 2017-05-12 08:00 |  |  |  |
| 112 | 4.6 | Review function module code |  | 2h | 2017-05-17 08:00 | 2017-05-17 10:00 |  | 0.5d | 0d | start no earlier than 2017-05-17 08:00 |  |  |  |
| 113 | 4.7 | Update test case for functional module |  | 2h | 2017-05-17 08:00 | 2017-05-17 10:00 |  | 1.25d |  | start no earlier than 2017-05-17 08:00 |  |  |  |
| 114 | 4.8 | Create unit test code |  | 2h | 2017-05-17 08:00 | 2017-05-17 10:00 |  | 1.25d |  | start no earlier than 2017-05-17 08:00 |  |  |  |
| 115 | 4.9 | Intergrate Component | milestone | 0d | 2017-05-17 08:00 | 2017-05-17 08:00 |  | 1.5d |  | start no earlier than 2017-05-17 08:00 |  |  |  |
| 116 | 4.10 | Review Intergration component code | milestone | 0d | 2017-05-17 08:00 | 2017-05-17 08:00 |  | 1.5d |  | start no earlier than 2017-05-17 08:00 |  |  |  |
| 117 | 4.11 | Update test case for functional module |  | 2h | 2017-05-17 08:00 | 2017-05-17 10:00 |  | 1.25d |  | start no earlier than 2017-05-17 08:00 |  |  |  |
| 118 | 4.12 | Create system description |  | 4h | 2017-05-18 08:00 | 2017-05-18 12:00 |  | 0d |  | start no earlier than 2017-05-18 08:00 |  |  |  |
| 119 | 4.13 | Code function module (Update) |  | 4h | 2017-05-18 08:00 | 2017-05-18 12:00 |  | 0d |  | start no earlier than 2017-05-18 08:00 |  |  |  |

| ID | WBS | Task | Type | Duration | Start | Finish | Predecessors | Total slack |
| --- | --- | --- | --- | --- | --- | --- | --- | --- |
| 120 | 5 | **Testing & fix bug** |  | 0d | 2017-05-18 12:00 | 2017-05-18 12:00 | 94 | 0d |
| 121 | 5.1 | **Unit Testing** |  | 0d | 2017-05-18 12:00 | 2017-05-18 12:00 |  | 0d |
| 122 | 5.1.1 | Function test | milestone | 0h | 2017-05-18 12:00 | 2017-05-18 12:00 |  | 0d |
| 123 | 5.1.2 | User interface test | milestone | 0h | 2017-05-18 12:00 | 2017-05-18 12:00 | 122, 127 | 0d |
| 124 | 5.1.3 | Performance test | milestone | 0h | 2017-05-18 12:00 | 2017-05-18 12:00 | 123, 128 | 0d |
| 125 | 5.1.4 | Security and Access Control Testing | milestone | 0d | 2017-05-18 12:00 | 2017-05-18 12:00 | 124 | 0d |
| 126 | 5.2 | **Interaction test** |  | 0d | 2017-05-18 12:00 | 2017-05-18 12:00 |  | 0d |
| 127 | 5.2.1 | Function test | milestone | 0h | 2017-05-18 12:00 | 2017-05-18 12:00 |  | 0d |
| 128 | 5.2.2 | User interface test | milestone | 0h | 2017-05-18 12:00 | 2017-05-18 12:00 | 122, 127 | 0d |
| 129 | 6 | Desployment | milestone | 0d | 2017-05-18 12:00 | 2017-05-18 12:00 | 120 | 0d |
| 130 | 7 | **Document** |  | 0.5d | 2017-05-18 13:00 | 2017-05-19 08:00 | 129 | 0d |
| 131 | 7.1 | User guide |  | 4h | 2017-05-18 13:00 | 2017-05-18 17:00 |  | 0d |
| 132 | 7.2 | **Delopyment document** |  | 0d | 2017-05-19 08:00 | 2017-05-19 08:00 |  |  |
| 133 | 7.2.1 | Installation guide | milestone | 0d | 2017-05-19 08:00 | 2017-05-19 08:00 |  | 0d |
