# Software Development

Schedule from MS Project, 2017-04-24 to 2017-05-23.

## Calendars

- Standard: Mon-Fri 08:00-12:00, 13:00-17:00; Sat-Sun off.

## Resources

| Resource |
| --- |
| Management |
| Project Manager |
| Analyst |
| Developer |
| Testers |
| Trainers |
| Technical Communicators |
| Deployment Team |

## Schedule

| ID | WBS | Task | Duration | Start | Finish | Predecessors | Total slack | Free slack | Constraint | Resources | Work | Output | Account Worker |
| --- | --- | --- | --- | --- | --- | --- | --- | --- | --- | --- | --- | --- | --- |
| 1 | 1 | **Analysis/Software Requirements** | 2.75d | 2017-04-24 08:00 | 2017-04-26 15:00 |  |  |  |  |  | 48h |  |  |
| 2 | 1.1 | Clarify Requrement | 2h | 2017-04-24 08:00 | 2017-04-24 10:00 |  | 2.5d |  |  | Developer | 2h | Reading IMP_URD again | ThuongTT2, NgheTK, DuyHH1 |
| 3 | 1.2 | Create Q&A | 2h | 2017-04-24 08:00 | 2017-04-24 10:00 |  | 1d | 0.75d |  | Developer | 2h | File Q&A | ThuongTT2, NgheTK, DuyHH1 |
| 4 | 1.3 | **Create SRS** | 1.5d | 2017-04-25 08:00 | 2017-04-26 12:00 | 3 | 0.25d |  |  | Developer | 40h |  |  |
| 5 | 1.3.1 | Create Use Case Create Meeting Request | 1d | 2017-04-25 08:00 | 2017-04-25 17:00 |  | 0.25d | 0d | start no earlier than 2017-04-25 08:00 | Developer | 8h | Excel Usecase | NgheTK |
| 6 | 1.3.2 | Create Use Case Book Room | 1d | 2017-04-25 08:00 | 2017-04-25 17:00 |  | 0.75d |  | start no earlier than 2017-04-25 08:00 | Developer | 8h | Excel Usecase | ThuongTT2 |
| 7 | 1.3.3 | Create Use Case Report | 1d | 2017-04-25 08:00 | 2017-04-25 17:00 | 3 | 0.75d |  | start no earlier than 2017-04-25 08:00 | Developer | 8h | Excel Usecase | DuyHH1 |
| 8 | 1.3.4 | Review Usecase and Update SRS | 4h | 2017-04-26 08:00 | 2017-04-26 12:00 | 5 | 0.25d |  |  | Developer | 4h | SRS | ThuongTT2, NgheTK, DuyHH1 |
| 9 | 1.4 | Review & Approve | 4h | 2017-04-27 13:00 | 2017-04-27 17:00 | 7 | 17.12d |  | finish no earlier than 2017-04-27 17:00 | Developer | 4h | SRS | ThuongTT2, NgheTK, DuyHH1 |
| 10 | 1.5 | **Design** | 5.5d | 2017-05-03 08:00 | 2017-05-10 12:00 |  |  |  |  | Analyst |  |  |  |
| 11 | 1.5.1 | **High level design** | 1d | 2017-05-03 08:00 | 2017-05-03 17:00 |  |  |  |  |  |  |  |  |
| 12 | 1.5.1.1 | Software architecture | 1d? | 2017-05-03 08:00 | 2017-05-03 17:00 |  | 0d |  |  |  |  |  |  |
| 13 | 1.5.1.2 | System architecture | 1d? | 2017-05-03 08:00 | 2017-05-03 17:00 |  | 0d |  |  |  |  |  |  |
| 14 | 1.5.2 | Review & Approve High level design | 4h | 2017-05-03 08:00 | 2017-05-03 12:00 |  | 4.5d | 0d | start no earlier than 2017-05-03 08:00 |  |  |  |  |
| 15 | 1.5.3 | Rework & Update High level design | 4h | 2017-05-03 13:00 | 2017-05-03 17:00 | 14 | 4.5d |  |  |  |  |  |  |
| 16 | 1.5.4 | **Detail Design** | 5d | 2017-05-03 08:00 | 2017-05-09 17:00 |  | 0d |  |  |  |  |  |  |
| 17 | 1.5.4.1 | **Screen Design Document** | 0.25d | 2017-05-03 08:00 | 2017-05-03 10:00 |  | 0d |  |  |  |  |  |  |
| 18 | 1.5.4.1.1 | **Screen follow** | 1h | 2017-05-03 08:00 | 2017-05-03 09:00 |  |  |  |  |  |  |  |  |
| 19 | 1.5.4.1.1.1 | Create Screen Flow for List and Cancel MR | 1h | 2017-05-03 08:00 | 2017-05-03 09:00 |  | 0d |  |  |  |  |  | ThuongTT2 |
| 20 | 1.5.4.1.1.2 | Create Screen Flow for Add and Edit MR | 1h | 2017-05-03 08:00 | 2017-05-03 09:00 |  | 0d |  |  |  |  |  | NgheTK |
| 21 | 1.5.4.1.1.3 | Create Screen Flow for Report | 1h | 2017-05-03 08:00 | 2017-05-03 09:00 |  | 0d |  |  |  |  |  | DuyHH1 |
| 22 | 1.5.4.1.2 | **Screen’s component list** | 1h | 2017-05-03 08:00 | 2017-05-03 09:00 |  |  |  |  |  |  |  |  |
| 23 | 1.5.4.1.2.1 | Create screen's component list for List and Cancel MR | 1h | 2017-05-03 08:00 | 2017-05-03 09:00 |  | 0d |  |  |  |  |  | ThuongTT2 |
| 24 | 1.5.4.1.2.2 | Create screen's component list for Add and Edit MR | 1h | 2017-05-03 08:00 | 2017-05-03 09:00 |  | 0d |  |  |  |  |  | NgheTK |
| 25 | 1.5.4.1.2.3 | Create screen's component list for Report | 1h | 2017-05-03 08:00 | 2017-05-03 09:00 |  | 0d |  |  |  |  |  | DuyHH1 |

| ID | WBS | Task | Duration | Start | Finish | Total slack | Constraint | Account Worker |
| --- | --- | --- | --- | --- | --- | --- | --- | --- |
| 26 | 1.5.4.1.3 | **Screen picture** | 2h | 2017-05-03 08:00 | 2017-05-03 10:00 |  |  |  |
| 27 | 1.5.4.1.3.1 | Create Screen picture for list and Cancel MR | 2h | 2017-05-03 08:00 | 2017-05-03 10:00 | 0d |  | ThuongTT2 |
| 28 | 1.5.4.1.3.2 | Create Screen picture for Add and Edit MR | 2h | 2017-05-03 08:00 | 2017-05-03 10:00 | 0d |  | NgheTK |
| 29 | 1.5.4.1.3.3 | Create Screen picture for Report | 2h | 2017-05-03 08:00 | 2017-05-03 10:00 | 0d |  | DuyHH1 |
| 30 | 1.5.4.1.4 | **Activity Diagram** | 2h | 2017-05-03 08:00 | 2017-05-03 10:00 |  |  |  |
| 31 | 1.5.4.1.4.1 | Create Activity Diagram For List and Cancel MR | 2h | 2017-05-03 08:00 | 2017-05-03 10:00 | 0d |  | ThuongTT2 |
| 32 | 1.5.4.1.4.2 | Create Activity Diagram For Add and Edit MR | 2h | 2017-05-03 08:00 | 2017-05-03 10:00 | 0d |  | NgheTK |
| 33 | 1.5.4.1.4.3 | Create Activity Diagram For Report | 2h | 2017-05-03 08:00 | 2017-05-03 10:00 | 0d |  | DuyHH1 |
| 34 | 1.5.4.1.5 | **Sequence diagram** | 2h | 2017-05-03 08:00 | 2017-05-03 10:00 |  |  |  |
| 35 | 1.5.4.1.5.1 | Create Sequence diagram for List and Cancel MR | 2h | 2017-05-03 08:00 | 2017-05-03 10:00 | 0d |  | ThuongTT2 |
| 36 | 1.5.4.1.5.2 | Create Sequence diagram for Add and Edit MR | 2h | 2017-05-03 08:00 | 2017-05-03 10:00 | 0d |  | NgheTK |
| 37 | 1.5.4.1.5.3 | Create Sequence diagram for Report | 2h | 2017-05-03 08:00 | 2017-05-03 10:00 | 0d |  | DuyHH1 |
| 38 | 1.5.4.2 | **Class Design Document** | 4d | 2017-05-04 08:00 | 2017-05-09 17:00 |  |  |  |
| 39 | 1.5.4.2.1 | Technical constraints | 1h | 2017-05-04 08:00 | 2017-05-04 09:00 | 3.88d |  |  |
| 40 | 1.5.4.2.2 | **Logical view** | 0.25d | 2017-05-04 08:00 | 2017-05-04 10:00 | 0d |  |  |
| 41 | 1.5.4.2.2.1 | **Presentation Layer** | 0.25d | 2017-05-04 08:00 | 2017-05-04 10:00 | 0d |  |  |
| 42 | 1.5.4.2.2.1.1 | **ModelAndView Diagram** | 0.25d | 2017-05-04 08:00 | 2017-05-04 10:00 | 3.75d |  |  |
| 43 | 1.5.4.2.2.1.1.1 | Create ModelAndView Diagram for list and cancel MR | 2h | 2017-05-04 08:00 | 2017-05-04 10:00 | 3.75d |  | ThuongTT2 |
| 44 | 1.5.4.2.2.1.1.2 | Create ModelAndView Diagram for Add and Edit MR | 2h | 2017-05-04 08:00 | 2017-05-04 10:00 | 3.75d |  | NgheTK |
| 45 | 1.5.4.2.2.1.1.3 | Create ModelAndView Diagram for report | 2h | 2017-05-04 08:00 | 2017-05-04 10:00 | 3.75d |  | DuyHH1 |
| 46 | 1.5.4.2.2.1.2 | **Controller** | 1h | 2017-05-04 08:00 | 2017-05-04 09:00 |  |  |  |
| 47 | 1.5.4.2.2.1.2.1 | Create Controller Diagram for list and cancel MR | 1h | 2017-05-04 08:00 | 2017-05-04 09:00 | 0d |  | ThuongTT2 |
| 48 | 1.5.4.2.2.1.2.2 | Create Controller Diagram for Add and Edit MR | 1h | 2017-05-04 08:00 | 2017-05-04 09:00 | 0d |  | NgheTK |
| 49 | 1.5.4.2.2.1.2.3 | Create Controller Diagram for report | 1h | 2017-05-04 08:00 | 2017-05-04 09:00 | 0d |  | DuyHH1 |
| 50 | 1.5.4.2.2.2 | Business Layer | 1.5h | 2017-05-04 08:00 | 2017-05-04 09:30 | 3.81d | start no earlier than 2017-05-04 08:00 |  |

| ID | WBS | Task | Duration | Start | Finish | Predecessors | Total slack | Constraint | Account Worker |
| --- | --- | --- | --- | --- | --- | --- | --- | --- | --- |
| 51 | 1.5.4.2.2.3 | **Data Access Layer** | 1h | 2017-05-04 08:00 | 2017-05-04 09:00 |  |  |  |  |
| 52 | 1.5.4.2.2.3.1 | **Entity** | 1h | 2017-05-04 08:00 | 2017-05-04 09:00 |  |  |  |  |
| 53 | 1.5.4.2.2.3.1.1 | Create Entity for list and cancel MR | 1h | 2017-05-04 08:00 | 2017-05-04 09:00 |  | 0d |  | ThuongTT2 |
| 54 | 1.5.4.2.2.3.1.2 | Create Entity for Add and Edit MR | 1h | 2017-05-04 08:00 | 2017-05-04 09:00 |  | 0d |  | NgheTK |
| 55 | 1.5.4.2.2.3.1.3 | Create Entity for report | 1h | 2017-05-04 08:00 | 2017-05-04 09:00 |  | 0d |  | DuyHH1 |
| 56 | 1.5.4.2.2.3.2 | **Repository (DAL)** | 1h | 2017-05-04 08:00 | 2017-05-04 09:00 |  |  |  |  |
| 57 | 1.5.4.2.2.3.2.1 | Create Repository for list and cancel MR | 1h | 2017-05-04 08:00 | 2017-05-04 09:00 |  | 0d |  | ThuongTT2 |
| 58 | 1.5.4.2.2.3.2.2 | Create Repositoty for Add and Edit MR | 1h | 2017-05-04 08:00 | 2017-05-04 09:00 |  | 0d |  | NgheTK |
| 59 | 1.5.4.2.2.3.2.3 | Create Repository for report | 1h | 2017-05-04 08:00 | 2017-05-04 09:00 |  | 0d |  | DuyHH1 |
| 60 | 1.5.4.2.2.4 | **Common classes** | 0.5h | 2017-05-04 08:00 | 2017-05-04 08:30 |  |  |  |  |
| 61 | 1.5.4.2.2.4.1 | Create Repository for list and cancel MR | 0.5h | 2017-05-04 08:00 | 2017-05-04 08:30 |  | 0d |  | ThuongTT2 |
| 62 | 1.5.4.2.2.4.2 | Create Repositoty for Add and Edit MR | 0.5h | 2017-05-04 08:00 | 2017-05-04 08:30 |  | 0d |  | NgheTK |
| 63 | 1.5.4.2.2.4.3 | Create Repository for report | 0.5h | 2017-05-04 08:00 | 2017-05-04 08:30 |  | 0d |  | DuyHH1 |
| 64 | 1.5.4.2.3 | **Architecturally significant design packages** | 0.12d | 2017-05-05 08:00 | 2017-05-05 09:00 |  |  |  |  |
| 65 | 1.5.4.2.3.1 | Package structure | 1h | 2017-05-05 08:00 | 2017-05-05 09:00 |  | 0d |  |  |
| 66 | 1.5.4.2.3.2 | Error and exception handling | 1h | 2017-05-05 08:00 | 2017-05-05 09:00 |  | 0d |  |  |
| 67 | 1.5.4.2.3.3 | Log, trace, and debug | 1h | 2017-05-05 08:00 | 2017-05-05 09:00 |  | 0d |  |  |
| 68 | 1.5.4.2.3.4 | Common flow | 1h | 2017-05-05 08:00 | 2017-05-05 09:00 |  | 0d |  |  |
| 69 | 1.5.4.2.4 | Software and deployment architecture | 4h | 2017-05-05 08:00 | 2017-05-05 12:00 |  | 3d | start no earlier than 2017-05-05 08:00 |  |
| 70 | 1.5.4.3 | **Data Design Document** | 1d | 2017-05-05 08:00 | 2017-05-05 17:00 |  |  |  |  |
| 71 | 1.5.4.3.1 | Entity relationship diagrams | 2h | 2017-05-05 08:00 | 2017-05-05 10:00 |  | 3.25d | start no earlier than 2017-05-05 08:00 |  |
| 72 | 1.5.4.3.2 | Tables structure | 2h | 2017-05-05 08:00 | 2017-05-05 10:00 |  | 3.25d | start no earlier than 2017-05-05 08:00 |  |
| 73 | 1.5.4.3.3 | Fields structure | 2h | 2017-05-05 08:00 | 2017-05-05 10:00 |  | 3.25d | start no earlier than 2017-05-05 08:00 |  |
| 74 | 1.5.4.3.4 | Files structure | 1h | 2017-05-05 08:00 | 2017-05-05 09:00 |  | 3.38d | start no earlier than 2017-05-05 08:00 |  |
| 75 | 1.5.4.3.5 | Design the format of codes | 1h | 2017-05-05 08:00 | 2017-05-05 09:00 |  | 3.38d | start no earlier than 2017-05-05 08:00 |  |
| 76 | 1.5.5 | Review & Approve detail design | 4h | 2017-05-05 08:00 | 2017-05-05 12:00 |  | 3d | start no earlier than 2017-05-05 08:00 |  |
| 77 | 1.5.6 | Rework & Review & Approve Detail design | 4h | 2017-05-05 08:00 | 2017-05-05 12:00 | 76 | 3d | start no earlier than 2017-05-05 08:00 |  |
| 78 | 1.5.7 | Conduct design transition | 4h | 2017-05-05 08:00 | 2017-05-05 12:00 | 77 | 3d | start no earlier than 2017-05-05 08:00 |  |

Notes:
- 77: Output: Class, Sequence, Detail Design (Screen Document), Schema Design (Entity Relationship Database)

| ID | WBS | Task | Type | Duration | Start | Finish | Predecessors | Total slack | Free slack | Constraint | Resources | Work | Account Worker | Output |
| --- | --- | --- | --- | --- | --- | --- | --- | --- | --- | --- | --- | --- | --- | --- |
| 79 | 1.6 | **Create test case** |  | 4h | 2017-05-08 08:00 | 2017-05-08 12:00 |  |  |  |  |  |  |  |  |
| 80 | 1.6.1 | Create test case for add and edit MR |  | 4h | 2017-05-08 08:00 | 2017-05-08 12:00 |  | 0d |  |  |  |  | NgheTK |  |
| 81 | 1.6.2 | Create test case for list and cancel MR |  | 4h | 2017-05-08 08:00 | 2017-05-08 12:00 |  | 0d |  |  |  |  | ThuongTT2 |  |
| 82 | 1.6.3 | Create test case for report |  | 4h | 2017-05-08 08:00 | 2017-05-08 12:00 |  | 0d |  |  |  |  | DuyHH1 |  |
| 83 | 2 | **Development** |  | 4d | 2017-05-09 08:00 | 2017-05-12 17:00 |  |  |  |  |  | 28h |  |  |
| 84 | 2.1 | Review functional specifications |  | 1h | 2017-05-09 08:00 | 2017-05-09 09:00 |  | 3.62d | 0d |  | Developer | 1h |  |  |
| 85 | 2.2 | Identify modular/tiered design parameters |  | 1h | 2017-05-09 09:00 | 2017-05-09 10:00 | 84 | 3.62d | 0d |  | Developer | 1h |  |  |
| 86 | 2.3 | Assign development staff |  | 1h | 2017-05-09 10:00 | 2017-05-09 11:00 | 85 | 3.62d |  |  | Developer | 1h |  |  |
| 87 | 2.4 | **Develop code** |  | 3d | 2017-05-09 08:00 | 2017-05-11 17:00 |  |  |  |  | Developer | 24h |  |  |
| 88 | 2.4.1 | Create repository, business, service, screen for Meeting Request |  | 1d | 2017-05-10 08:00 | 2017-05-10 17:00 |  | 8.12d |  | finish no earlier than 2017-05-10 17:00 |  |  | ThuongTT2, NgheTK, DuyHH1 |  |
| 89 | 2.4.2 | Review code |  | 1d | 2017-05-15 08:00 | 2017-05-15 17:00 | 88 | -4.12d | 0d | start no earlier than 2017-05-15 08:00 |  |  |  |  |
| 90 | 2.5 | <New Task> |  | 1d? | 2017-05-16 08:00 | 2017-05-16 17:00 | 89 | -4.12d | 0d |  |  |  |  |  |
| 91 | 2.6 | Developer testing (primary debugging) |  | 1h | 2017-05-17 08:00 | 2017-05-17 09:00 | 90 | -4.12d | 0d |  | Developer | 1h |  |  |
| 92 | 2.7 | Unit Test ( White box ) |  | 1d | 2017-05-17 09:00 | 2017-05-18 09:00 | 91 | -4.12d | 0d |  |  |  |  |  |
| 93 | 2.8 | Development complete |  | 1d | 2017-05-18 09:00 | 2017-05-19 09:00 | 92 | -4.12d | 0d |  |  |  |  | Source code Project |
| 94 | 3 | **Testing** |  | 2d | 2017-05-19 09:00 | 2017-05-23 09:00 | 93 | 0d |  |  |  | 16h |  |  |
| 95 | 3.1 | Develop unit test plans using product specifications |  | 4h | 2017-05-19 09:00 | 2017-05-19 14:00 |  | 0d |  |  | Developer | 4h |  |  |
| 96 | 3.2 | **Unit Testing** |  | 1.5d | 2017-05-19 14:00 | 2017-05-23 09:00 |  | 0d |  |  |  | 12h |  |  |
| 97 | 3.2.1 | Review modular code |  | 1h | 2017-05-19 14:00 | 2017-05-19 15:00 | 95, 93 | 0d |  |  | Developer | 1h |  |  |
| 98 | 3.2.2 | Test component modules to product specifications |  | 1h | 2017-05-19 15:00 | 2017-05-19 16:00 | 93, 97 | 0d |  |  | Developer | 1h |  |  |
| 99 | 3.2.3 | Identify anomalies to product specifications |  | 1h | 2017-05-19 16:00 | 2017-05-19 17:00 | 98 | 0d |  |  | Developer | 1h |  |  |
| 100 | 3.2.4 | Modify code |  | 1d | 2017-05-22 08:00 | 2017-05-22 17:00 | 99 | 0d |  |  | Developer | 8h |  |  |
| 101 | 3.2.5 | Re-test modified code |  | 1h | 2017-05-23 08:00 | 2017-05-23 09:00 | 100 | 0d |  |  | Developer | 1h |  |  |
| 102 | 3.2.6 | Unit testing complete | milestone | 0d | 2017-05-23 09:00 | 2017-05-23 09:00 | 101 | 0d |  |  |  |  |  | Test case, test report (Unit test document) |
