# Software Development

Schedule from MS Project, 2017-04-24 to 2017-05-17, A marks actual dates.

## Calendars

- Standard: Mon-Fri 08:00-12:00, 13:00-17:00; Sat-Sun off. Exceptions (off unless hours are given): 2017-05-01 (Quoc te lao dong), 2017-05-02 (Nghi bu ngay mien nam hoan toan giai phong).

## Resources

| Resource |
| --- |
| Management |
| Project Manager |
| Analyst |
| Developer |
| Testers |
| Trainers |
| Technical Communicators |
| Deployment Team |

## Schedule

| ID | WBS | Task | Duration | Start | Finish | Predecessors | Complete | Remaining | Total slack | Constraint | Resources | Work | Actual work |
| --- | --- | --- | --- | --- | --- | --- | --- | --- | --- | --- | --- | --- | --- |
| 1 | 1 | **Analysis/Software Requirements** | 5d? | 2017-04-24 A | 2017-04-28 |  | 78% | 1.11d? | 0d |  |  | 36h | 28h |
| 2 | 1.1 | Clarify Requrement | 2h | 2017-04-24 A | 2017-04-24 A |  | 100% |  |  | start no earlier than 2017-04-24 | Deployment Team | 2h | 2h |
| 3 | 1.2 | Create Q&A | 2h | 2017-04-24 A | 2017-04-24 A | 2 | 100% |  |  |  | Deployment Team | 2h | 2h |
| 4 | 1.3 | Create SRS | 2d | 2017-04-25 A | 2017-04-26 A | 3 | 100% |  |  | start no earlier than 2017-04-25 | Deployment Team | 16h | 16h |
| 5 | 1.4 | Review & Approve | 1d | 2017-04-27 A | 2017-04-27 A | 4 | 100% |  |  |  | Deployment Team | 8h | 8h |
| 6 | 1.5 | Rework & Update SRS | 1d? | 2017-04-28 | 2017-04-28 | 5 |  |  | 0d | start no earlier than 2017-04-28 | Deployment Team | 8h |  |
| 7 | 2 | **Design** | 6.5d? | 2017-05-03 | 2017-05-11 | 1 |  |  | 0d |  | Analyst |  |  |
| 8 | 2.1 | **High level design** | 1d? | 2017-05-03 | 2017-05-03 |  |  |  | 0d |  |  |  |  |
| 9 | 2.1.1 | Software architecture | 1d? | 2017-05-03 | 2017-05-03 |  |  |  | 0d |  |  |  |  |
| 10 | 2.1.2 | System architecture | 1d? | 2017-05-03 | 2017-05-03 |  |  |  | 0d |  |  |  |  |
| 11 | 2.2 | Review & Approve High level design | 1d? | 2017-05-04 | 2017-05-04 | 8 |  |  | 0d |  |  |  |  |
| 12 | 2.3 | Rework & Update High level design | 1d? | 2017-05-05 | 2017-05-05 | 11 |  |  | 0d |  |  |  |  |
| 13 | 2.4 | **Detail Design** | 1d? | 2017-05-08 | 2017-05-08 | 12 |  |  | 0d |  |  |  |  |
| 14 | 2.4.1 | **Screen Design Document** | 1d? | 2017-05-08 | 2017-05-08 |  |  |  | 2.5d |  |  |  |  |
| 15 | 2.4.1.1 | Screen follow | 1d? | 2017-05-08 | 2017-05-08 |  |  |  | 2.5d |  |  |  |  |
| 16 | 2.4.1.2 | Screen’s component list | 1d? | 2017-05-08 | 2017-05-08 |  |  |  | 2.5d |  |  |  |  |
| 17 | 2.4.1.3 | Screen picture | 1d? | 2017-05-08 | 2017-05-08 |  |  |  | 2.5d |  |  |  |  |
| 18 | 2.4.2 | **Class Design Document** | 1d? | 2017-05-08 | 2017-05-08 |  |  |  | 2.5d |  |  |  |  |
| 19 | 2.4.2.1 | Technical constraints | 1d? | 2017-05-08 | 2017-05-08 |  |  |  | 2.5d |  |  |  |  |
| 20 | 2.4.2.2 | **Logical view** | 1d? | 2017-05-08 | 2017-05-08 |  |  |  | 2.5d |  |  |  |  |
| 21 | 2.4.2.2.1 | Presentation Layer | 1d? | 2017-05-08 | 2017-05-08 |  |  |  | 2.5d |  |  |  |  |
| 22 | 2.4.2.2.2 | Business Layer | 1d? | 2017-05-08 | 2017-05-08 |  |  |  | 2.5d |  |  |  |  |
| 23 | 2.4.2.2.3 | Data Access Layer | 1d? | 2017-05-08 | 2017-05-08 |  |  |  | 2.5d |  |  |  |  |
| 24 | 2.4.2.2.4 | Common classes | 1d? | 2017-05-08 | 2017-05-08 |  |  |  | 2.5d |  |  |  |  |

| ID | WBS | Task | Duration | Start | Finish | Predecessors | Total slack | Constraint |
| --- | --- | --- | --- | --- | --- | --- | --- | --- |
| 25 | 2.4.2.3 | **Architecturally significant design packages** | 1d? | 2017-05-08 | 2017-05-08 |  | 2.5d |  |
| 26 | 2.4.2.3.1 | Package structure | 1d? | 2017-05-08 | 2017-05-08 |  | 2.5d |  |
| 27 | 2.4.2.3.2 | Error and exception handling | 1d? | 2017-05-08 | 2017-05-08 |  | 2.5d |  |
| 28 | 2.4.2.3.3 | Log, trace, and debug | 1d? | 2017-05-08 | 2017-05-08 |  | 2.5d |  |
| 29 | 2.4.2.3.4 | Common flow | 1d? | 2017-05-08 | 2017-05-08 |  | 2.5d |  |
| 30 | 2.4.2.4 | Software and deployment architecture | 1d? | 2017-05-08 | 2017-05-08 |  | 2.5d |  |
| 31 | 2.4.3 | **Data Design Document** | 1d? | 2017-05-08 | 2017-05-08 |  | 0d |  |
| 32 | 2.4.3.1 | Entity relationship diagrams | 1d? | 2017-05-08 | 2017-05-08 |  | 0d |  |
| 33 | 2.4.3.2 | Tables structure | 1d? | 2017-05-08 | 2017-05-08 |  | 0d |  |
| 34 | 2.4.3.3 | Fields structure | 1d? | 2017-05-08 | 2017-05-08 |  | 0d |  |
| 35 | 2.4.3.4 | Files structure | 1d? | 2017-05-08 | 2017-05-08 |  | 0d |  |
| 36 | 2.4.3.5 | Design the format of codes | 1d? | 2017-05-08 | 2017-05-08 |  | 0d |  |
| 37 | 2.5 | Review & Approve detail design | 1d? | 2017-05-09 | 2017-05-09 | 31 | 0d |  |
| 38 | 2.6 | Rework & Review & Approve Detail design | 4h | 2017-05-10 | 2017-05-10 | 37 | 0d | start no earlier than 2017-05-08 |
| 39 | 2.7 | Conduct design transition | 1d? | 2017-05-10 | 2017-05-11 | 38 | 0d |  |
| 40 | 3 | Create test case | 1d? | 2017-05-11 | 2017-05-12 | 7 | 0d |  |
| 41 | 4 | **Coding** | 1d? | 2017-05-12 | 2017-05-15 | 40 | 0d |  |
| 42 | 4.1 | Code library module | 1d? | 2017-05-12 | 2017-05-15 |  | 0d |  |
| 43 | 4.2 | Review code libray module | 1d? | 2017-05-12 | 2017-05-15 |  | 0d |  |
| 44 | 4.3 | Update test case for library module | 1d? | 2017-05-12 | 2017-05-15 |  | 0d |  |
| 45 | 4.4 | Code function module | 1d? | 2017-05-12 | 2017-05-15 |  | 0d |  |
| 46 | 4.5 | Review function module code | 1d? | 2017-05-12 | 2017-05-15 |  | 0d |  |
| 47 | 4.6 | Update test case for functional module | 1d? | 2017-05-12 | 2017-05-15 |  | 0d |  |
| 48 | 4.7 | Intergrate Component | 1d? | 2017-05-12 | 2017-05-15 |  | 0d |  |
| 49 | 4.8 | Review Intergration component code | 1d? | 2017-05-12 | 2017-05-15 |  | 0d |  |
| 50 | 4.9 | Update test case for functional module | 1d? | 2017-05-12 | 2017-05-15 |  | 0d |  |
| 51 | 4.10 | Create system description | 1d? | 2017-05-12 | 2017-05-15 |  | 0d |  |
| 52 | 4.11 | Code function module (Update) | 1d? | 2017-05-12 | 2017-05-15 |  | 0d |  |

Notes:
- 38: Output: Class, Sequence, Detail Design (Screen Document), Schema Design (Entity Relationship Database)

| ID | WBS | Task | Duration | Start | Finish | Predecessors | Total slack | Resources | Work |
| --- | --- | --- | --- | --- | --- | --- | --- | --- | --- |
| 53 | 5 | **Testing & fix bug** | 1.38d | 2017-05-15 | 2017-05-16 | 41 | 0d |  | 13h |
| 54 | 5.1 | **Unit Testing** | 1.38d | 2017-05-15 | 2017-05-16 |  | 0d |  | 11h |
| 55 | 5.1.1 | Function test | 1h | 2017-05-15 | 2017-05-15 |  | 0d | Deployment Team | 1h |
| 56 | 5.1.2 | User interface test | 1h | 2017-05-15 | 2017-05-15 | 55, 60 | 0d | Deployment Team | 1h |
| 57 | 5.1.3 | Performance test | 1h | 2017-05-15 | 2017-05-15 | 56, 61 | 0d | Deployment Team | 1h |
| 58 | 5.1.4 | Security and Access Control Testing | 1d | 2017-05-15 | 2017-05-16 | 57 | 0d | Deployment Team | 8h |
| 59 | 5.2 | **Interaction test** | 0.25d | 2017-05-15 | 2017-05-15 |  | 0d |  | 2h |
| 60 | 5.2.1 | Function test | 1h | 2017-05-15 | 2017-05-15 |  | 0d | Deployment Team | 1h |
| 61 | 5.2.2 | User interface test | 1h | 2017-05-15 | 2017-05-15 | 55, 60 | 0d | Deployment Team | 1h |
| 62 | 6 | Desployment | 1d? | 2017-05-16 | 2017-05-17 | 53 | 0d |  |  |
| 63 | 7 | **Document** | 1d? | 2017-05-15 | 2017-05-16 | 41 | 1.38d |  |  |
| 64 | 7.1 | User guide | 1d? | 2017-05-15 | 2017-05-16 |  | 1.38d |  |  |
| 65 | 7.2 | **Delopyment document** | 1d? | 2017-05-15 | 2017-05-16 |  | 1.38d |  |  |
| 66 | 7.2.1 | Installation guide | 1d? | 2017-05-15 | 2017-05-16 |  | 1.38d |  |  |
