# Software Development

Schedule from MS Project, 2017-04-24 to 2017-05-22, A marks actual dates.

## Calendars

- Standard: Mon-Fri 08:00-12:00, 13:00-17:00; Sat-Sun off. Exceptions (off unless hours are given): 2017-05-01 (Quoc te lao dong), 2017-05-02 (Nghi bu ngay mien nam hoan toan giai phong).

## Resources

| Resource |
| --- |
| Management |
| Project Manager |
| Analyst |
| Developer |
| Testers |
| Trainers |
| Technical Communicators |
| Deployment Team |

## Schedule

| ID | WBS | Task | Duration | Start | Finish | Predecessors | Complete | Remaining | Total slack | Free slack | Constraint | Resources | Work | Actual work |
| --- | --- | --- | --- | --- | --- | --- | --- | --- | --- | --- | --- | --- | --- | --- |
| 1 | 1 | **Analysis/Software Requirements** | 5d | 2017-04-24 08:00 A | 2017-04-28 17:00 |  | 78% | 1.11d | 0d |  |  |  | 36h | 28h |
| 2 | 1.1 | Clarify Requrement | 2h | 2017-04-24 08:00 A | 2017-04-24 10:00 A |  | 100% |  |  |  | start no earlier than 2017-04-24 08:00 | Deployment Team | 2h | 2h |
| 3 | 1.2 | Create Q&A | 2h | 2017-04-24 10:00 A | 2017-04-24 12:00 A | 2 | 100% |  |  |  |  | Deployment Team | 2h | 2h |
| 4 | 1.3 | Create SRS | 2d | 2017-04-25 08:00 A | 2017-04-26 17:00 A | 3 | 100% |  |  |  | start no earlier than 2017-04-25 08:00 | Deployment Team | 16h | 16h |
| 5 | 1.4 | Review & Approve | 1d | 2017-04-27 08:00 A | 2017-04-27 17:00 A | 4 | 100% |  |  |  |  | Deployment Team | 8h | 8h |
| 6 | 1.5 | Rework & Update SRS | 1d | 2017-04-28 08:00 | 2017-04-28 17:00 | 5 |  |  | 0d |  | start no earlier than 2017-04-28 05:00 | Deployment Team | 8h |  |
| 7 | 2 | **Design** | 5.5d | 2017-05-03 08:00 | 2017-05-10 12:00 | 1 |  |  |  |  |  | Analyst |  |  |
| 8 | 2.1 | **High level design** | 1d | 2017-05-03 08:00 | 2017-05-03 17:00 |  |  |  |  |  |  |  |  |  |
| 9 | 2.1.1 | Software architecture | 1d? | 2017-05-03 08:00 | 2017-05-03 17:00 |  |  |  | 0d |  |  |  |  |  |
| 10 | 2.1.2 | System architecture | 1d? | 2017-05-03 08:00 | 2017-05-03 17:00 |  |  |  | 0d |  |  |  |  |  |
| 11 | 2.2 | Review & Approve High level design | 4h | 2017-05-03 08:00 | 2017-05-03 12:00 |  |  |  | 5.5d | 0d | start no earlier than 2017-05-03 08:00 |  |  |  |
| 12 | 2.3 | Rework & Update High level design | 4h | 2017-05-03 13:00 | 2017-05-03 17:00 | 11 |  |  | 12.88d |  |  |  |  |  |
| 13 | 2.4 | **Detail Design** | 5d | 2017-05-03 08:00 | 2017-05-09 17:00 |  |  |  | 1d |  |  |  |  |  |
| 14 | 2.4.1 | **Screen Design Document** | 0.25d | 2017-05-03 08:00 | 2017-05-03 10:00 |  |  |  | 5.25d |  |  |  |  |  |
| 15 | 2.4.1.1 | Screen follow | 1h | 2017-05-03 08:00 | 2017-05-03 09:00 |  |  |  | 5.38d |  |  |  |  |  |
| 16 | 2.4.1.2 | Screen’s component list | 1h | 2017-05-03 08:00 | 2017-05-03 09:00 |  |  |  | 5.38d |  |  |  |  |  |
| 17 | 2.4.1.3 | Screen picture | 2h | 2017-05-03 08:00 | 2017-05-03 10:00 |  |  |  | 5.25d |  |  |  |  |  |
| 18 | 2.4.1.4 | Activity Diagram | 2h | 2017-05-03 08:00 | 2017-05-03 10:00 |  |  |  | 13.62d |  | start no earlier than 2017-05-03 08:00 |  |  |  |
| 19 | 2.4.1.5 | Sequence diagram | 2h | 2017-05-03 08:00 | 2017-05-03 10:00 |  |  |  | 13.62d |  | start no earlier than 2017-05-03 08:00 |  |  |  |
| 20 | 2.4.2 | **Class Design Document** | 4d | 2017-05-04 08:00 | 2017-05-09 17:00 |  |  |  |  |  |  |  |  |  |
| 21 | 2.4.2.1 | Technical constraints | 1h | 2017-05-04 08:00 | 2017-05-04 09:00 |  |  |  | 3.88d |  |  |  |  |  |
| 22 | 2.4.2.2 | **Logical view** | 0.25d | 2017-05-04 08:00 | 2017-05-04 10:00 |  |  |  | 0d |  |  |  |  |  |
| 23 | 2.4.2.2.1 | **Presentation Layer** | 0.25d | 2017-05-04 08:00 | 2017-05-04 10:00 |  |  |  | 3.75d |  |  |  |  |  |
| 24 | 2.4.2.2.1.1 | ModelAndView Diagram | 2h | 2017-05-04 08:00 | 2017-05-04 10:00 |  |  |  | 3.75d |  |  |  |  |  |
| 25 | 2.4.2.2.1.2 | Controller | 1h | 2017-05-04 08:00 | 2017-05-04 09:00 |  |  |  | 3.88d |  |  |  |  |  |
| 26 | 2.4.2.2.2 | Business Layer | 1.5h | 2017-05-04 08:00 | 2017-05-04 09:30 |  |  |  | 3.81d |  | start no earlier than 2017-05-04 08:00 |  |  |  |

| ID | WBS | Task | Type | Duration | Start | Finish | Predecessors | Total slack | Free slack | Constraint |
| --- | --- | --- | --- | --- | --- | --- | --- | --- | --- | --- |
| 27 | 2.4.2.2.3 | **Data Access Layer** |  | 0.12d | 2017-05-04 08:00 | 2017-05-04 09:00 |  |  |  |  |
| 28 | 2.4.2.2.3.1 | Entity |  | 1h | 2017-05-04 08:00 | 2017-05-04 09:00 |  | 12.75d |  | start no earlier than 2017-05-04 08:00 |
| 29 | 2.4.2.2.3.2 | Repository (DAL) |  | 1h | 2017-05-04 08:00 | 2017-05-04 09:00 |  | 12.75d |  | start no earlier than 2017-05-04 08:00 |
| 30 | 2.4.2.2.4 | Common classes |  | 0.5h | 2017-05-04 08:00 | 2017-05-04 08:30 |  | 3.94d |  | start no earlier than 2017-05-04 08:00 |
| 31 | 2.4.2.3 | **Architecturally significant design packages** |  | 0.12d | 2017-05-05 08:00 | 2017-05-05 09:00 |  |  |  |  |
| 32 | 2.4.2.3.1 | Package structure |  | 1h | 2017-05-05 08:00 | 2017-05-05 09:00 |  | 0d |  |  |
| 33 | 2.4.2.3.2 | Error and exception handling |  | 1h | 2017-05-05 08:00 | 2017-05-05 09:00 |  | 0d |  |  |
| 34 | 2.4.2.3.3 | Log, trace, and debug |  | 1h | 2017-05-05 08:00 | 2017-05-05 09:00 |  | 0d |  |  |
| 35 | 2.4.2.3.4 | Common flow |  | 1h | 2017-05-05 08:00 | 2017-05-05 09:00 |  | 0d |  |  |
| 36 | 2.4.2.4 | Software and deployment architecture |  | 4h | 2017-05-05 08:00 | 2017-05-05 12:00 |  | 11.38d |  | start no earlier than 2017-05-05 08:00 |
| 37 | 2.4.3 | **Data Design Document** |  | 1d | 2017-05-08 08:00 | 2017-05-08 17:00 |  |  |  |  |
| 38 | 2.4.3.1 | Entity relationship diagrams |  | 2h | 2017-05-08 08:00 | 2017-05-08 10:00 |  | 0.75d |  |  |
| 39 | 2.4.3.2 | Tables structure |  | 2h | 2017-05-08 08:00 | 2017-05-08 10:00 |  | 10.62d |  | start no earlier than 2017-05-08 08:00 |
| 40 | 2.4.3.3 | Fields structure |  | 2h | 2017-05-08 08:00 | 2017-05-08 10:00 |  | 10.62d |  | start no earlier than 2017-05-08 08:00 |
| 41 | 2.4.3.4 | Files structure |  | 1h | 2017-05-08 08:00 | 2017-05-08 09:00 |  | 10.75d |  | start no earlier than 2017-05-08 08:00 |
| 42 | 2.4.3.5 | Design the format of codes |  | 1h | 2017-05-08 08:00 | 2017-05-08 09:00 |  | 10.75d |  | start no earlier than 2017-05-08 08:00 |
| 43 | 2.5 | Review & Approve detail design |  | 4h | 2017-05-09 08:00 | 2017-05-09 12:00 |  | 0d |  | start no earlier than 2017-05-09 08:00 |
| 44 | 2.6 | Rework & Review & Approve Detail design |  | 4h | 2017-05-09 13:00 | 2017-05-09 17:00 | 43 | 0d |  | start no earlier than 2017-05-08 08:00 |
| 45 | 2.7 | Conduct design transition |  | 4h | 2017-05-10 08:00 | 2017-05-10 12:00 | 44 | 0d |  |  |
| 46 | 3 | Create test case |  | 4h | 2017-05-10 08:00 | 2017-05-10 12:00 |  | 3.5d | 0d | start no earlier than 2017-05-10 08:00 |
| 47 | 4 | **Coding** |  | 7.5d | 2017-05-11 08:00 | 2017-05-22 12:00 | 46 |  |  |  |
| 48 | 4.1 | Code library module |  | 4h | 2017-05-11 08:00 | 2017-05-11 12:00 |  | 7d |  |  |
| 49 | 4.2 | Review code libray module |  | 2h | 2017-05-11 08:00 | 2017-05-11 10:00 |  | 7.25d |  |  |
| 50 | 4.3 | Update test case for library module |  | 2h | 2017-05-11 08:00 | 2017-05-11 10:00 |  | 7.25d |  |  |
| 51 | 4.4 | Create test code |  | 4h | 2017-05-12 08:00 | 2017-05-12 12:00 |  | 6d |  | start no earlier than 2017-05-12 08:00 |
| 52 | 4.5 | Code function module |  | 2.5d | 2017-05-12 08:00 | 2017-05-16 12:00 |  | 4d |  | start no earlier than 2017-05-12 08:00 |
| 53 | 4.6 | Review function module code |  | 2h | 2017-05-17 08:00 | 2017-05-17 10:00 |  | 1.25d |  | start no earlier than 2017-05-17 08:00 |
| 54 | 4.7 | Update test case for functional module |  | 2h | 2017-05-17 08:00 | 2017-05-17 10:00 |  | 3.25d |  | start no earlier than 2017-05-17 08:00 |
| 55 | 4.8 | Create unit test code |  | 2h | 2017-05-17 08:00 | 2017-05-17 10:00 |  | 3.25d |  | start no earlier than 2017-05-17 08:00 |
| 56 | 4.9 | Intergrate Component | milestone | 0d | 2017-05-17 08:00 | 2017-05-17 08:00 |  | 3.5d |  | start no earlier than 2017-05-17 08:00 |
| 57 | 4.10 | Review Intergration component code | milestone | 0d | 2017-05-17 08:00 | 2017-05-17 08:00 |  | 1.5d |  | start no earlier than 2017-05-17 08:00 |
| 58 | 4.11 | Update test case for functional module |  | 2h | 2017-05-17 08:00 | 2017-05-17 10:00 |  | 1.25d |  | start no earlier than 2017-05-17 08:00 |
| 59 | 4.12 | Create system description |  | 4h | 2017-05-18 08:00 | 2017-05-18 12:00 |  | 2d |  | start no earlier than 2017-05-18 08:00 |
| 60 | 4.13 | Code function module (Update) |  | 4h | 2017-05-18 08:00 | 2017-05-18 12:00 |  | 2d |  | start no earlier than 2017-05-18 08:00 |

Notes:
- 44: Output: Class, Sequence, Detail Design (Screen Document), Schema Design (Entity Relationship Database)

| ID | WBS | Task | Type | Duration | Start | Finish | Predecessors | Total slack | Resources |
| --- | --- | --- | --- | --- | --- | --- | --- | --- | --- |
| 61 | 5 | **Testing & fix bug** |  | 0d | 2017-05-18 08:00 | 2017-05-18 08:00 |  |  |  |
| 62 | 5.1 | **Unit Testing** |  | 0d | 2017-05-18 08:00 | 2017-05-18 08:00 |  | 0d |  |
| 63 | 5.1.1 | Function test | milestone | 0h | 2017-05-18 08:00 | 2017-05-18 08:00 |  | 0d | Deployment Team |
| 64 | 5.1.2 | User interface test | milestone | 0h | 2017-05-18 08:00 | 2017-05-18 08:00 | 63, 68 | 0d | Deployment Team |
| 65 | 5.1.3 | Performance test | milestone | 0h | 2017-05-18 08:00 | 2017-05-18 08:00 | 64, 69 | 0d | Deployment Team |
| 66 | 5.1.4 | Security and Access Control Testing | milestone | 0d | 2017-05-18 08:00 | 2017-05-18 08:00 | 65 | 0d | Deployment Team |
| 67 | 5.2 | **Interaction test** |  | 0d | 2017-05-18 08:00 | 2017-05-18 08:00 |  | 0d |  |
| 68 | 5.2.1 | Function test | milestone | 0h | 2017-05-18 08:00 | 2017-05-18 08:00 |  | 0d | Deployment Team |
| 69 | 5.2.2 | User interface test | milestone | 0h | 2017-05-18 08:00 | 2017-05-18 08:00 | 63, 68 | 0d | Deployment Team |
| 70 | 6 | Desployment | milestone | 0d | 2017-05-18 08:00 | 2017-05-18 08:00 | 61 | 2.5d |  |
| 71 | 7 | **Document** |  | 4h | 2017-05-19 08:00 | 2017-05-19 12:00 |  |  |  |
| 72 | 7.1 | User guide |  | 4h | 2017-05-19 08:00 | 2017-05-19 12:00 |  | 0d |  |
| 73 | 7.2 | **Delopyment document** |  | 0d | 2017-05-19 08:00 | 2017-05-19 08:00 |  |  |  |
| 74 | 7.2.1 | Installation guide | milestone | 0d | 2017-05-19 08:00 | 2017-05-19 08:00 |  | 0d |  |
